# EAP

Schedule from MS Project, 2017-03-07 to 2017-05-25.

## Calendars

- Padrão: Mon-Fri 09:00-12:00, 13:00-18:00; Sat-Sun off.

## Resources

| Resource |
| --- |
| Natan |
| Tiago |
| Homero |

## Schedule

| ID | WBS | Task | Duration | Start | Finish | Predecessors | Total slack | Free slack | Resources | Work |
| --- | --- | --- | --- | --- | --- | --- | --- | --- | --- | --- |
| 1 | 1 | **Projeto TalkUniversity** | 57.75d? | 2017-03-07 | 2017-05-25 |  |  |  |  | 498h |
| 2 | 1.1 | **Prospecção** | 4d? | 2017-03-07 | 2017-03-10 |  | 0d |  |  | 24h |
| 3 | 1.1.1 | **EAP** | 1.25d? | 2017-03-07 | 2017-03-08 |  | 0d |  |  | 10h |
| 4 | 1.1.1.1 | Definir Estrutura Projeto | 0.5d? | 2017-03-07 | 2017-03-07 |  | 0d |  | Natan | 4h |
| 5 | 1.1.1.2 | Redigir EAP | 0.75d? | 2017-03-07 | 2017-03-08 | 4 | 0d |  | Natan | 6h |
| 6 | 1.1.2 | **Proposta Técnica** | 2.75d? | 2017-03-08 | 2017-03-10 | 5 | 0d |  |  | 14h |
| 7 | 1.1.2.1 | Reunião para Definição | 1d? | 2017-03-08 | 2017-03-09 |  | 0d |  | Natan [16.7%]; Tiago [33.3%]; Homero [33.3%] | 4h |
| 8 | 1.1.2.2 | Redigir Proposta Técnica | 0.75d? | 2017-03-09 | 2017-03-09 | 7 | 0d |  | Natan | 6h |
| 9 | 1.1.2.3 | Revisar Proposta Técnica | 1d? | 2017-03-10 | 2017-03-10 | 8 | 0d |  | Tiago [25%]; Homero [25%] | 4h |
| 10 | 1.2 | **Análise** | 11.5d? | 2017-03-13 | 2017-03-28 | 9 | 0d |  |  | 86h |
| 11 | 1.2.1 | **Documento de Requisitos** | 6d? | 2017-03-13 | 2017-03-20 |  | 0d |  |  | 48h |
| 12 | 1.2.1.1 | Reunião Definitiva para definição | 1d? | 2017-03-13 | 2017-03-13 |  | 0d |  | Natan [33.3%]; Tiago [33.3%]; Homero [33.3%] | 8h |
| 13 | 1.2.1.2 | Redigir Documento de Requisitos | 3.75d? | 2017-03-14 | 2017-03-17 | 12 | 0d |  | Tiago | 30h |
| 14 | 1.2.1.3 | Revisar Documento de Requisitos | 1.25d? | 2017-03-17 | 2017-03-20 | 13 | 0d |  | Homero | 10h |
| 15 | 1.2.2 | **Estimativa de Tamanho Preliminar** | 3d? | 2017-03-21 | 2017-03-23 | 14 | 0d |  |  | 14h |
| 16 | 1.2.2.1 | Analisar DRE | 1d? | 2017-03-21 | 2017-03-21 |  | 0d |  | Homero [25%] | 2h |
| 17 | 1.2.2.2 | Redigir Estimativa | 1d? | 2017-03-22 | 2017-03-22 | 16 | 0d |  | Homero | 8h |
| 18 | 1.2.2.3 | Revisar Estimativa | 1d? | 2017-03-23 | 2017-03-23 | 17 | 0d |  | Natan [50%] | 4h |
| 19 | 1.2.3 | **Cronograma Preliminar** | 2.5d? | 2017-03-24 | 2017-03-28 | 18 | 0d |  |  | 24h |
| 20 | 1.2.3.1 | Analisar Estimativa | 1d? | 2017-03-24 | 2017-03-24 |  | 0d |  | Natan [50%] | 4h |
| 21 | 1.2.3.2 | Definir Responsáveis pelas Tarefas | 1d? | 2017-03-24 | 2017-03-24 |  | 0d |  | Natan | 8h |
| 22 | 1.2.3.3 | Gerar Cronograma | 1.5d? | 2017-03-27 | 2017-03-28 | 21, 20 | 0d |  | Natan | 12h |
| 23 | 1.3 | **Projeto** | 4.75d? | 2017-03-28 | 2017-04-04 | 22 | 0d |  |  | 57h |
| 24 | 1.3.1 | **Estimativa Tamanho Definitivo** | 4.75d? | 2017-03-28 | 2017-04-04 |  | 37.5d |  |  | 34h |
| 25 | 1.3.1.1 | Reunião de Definição | 1d? | 2017-03-28 | 2017-03-29 |  | 37.5d | 0d | Natan [33.3%]; Tiago [33.3%]; Homero [33.3%] | 8h |
| 26 | 1.3.1.2 | Redigir Estimativa Definitiva | 2.75d? | 2017-03-29 | 2017-04-03 | 25 | 37.5d | 0d | Homero | 22h |
| 27 | 1.3.1.3 | Revisar Estimativa Definitiva | 1d? | 2017-04-03 | 2017-04-04 | 26 | 37.5d |  | Natan [50%] | 4h |

| ID | WBS | Task | Duration | Start | Finish | Predecessors | Total slack | Resources | Work |
| --- | --- | --- | --- | --- | --- | --- | --- | --- | --- |
| 28 | 1.3.2 | **Cronograma Definitivo** | 2.88d? | 2017-03-28 | 2017-03-31 |  | 0d |  | 23h |
| 29 | 1.3.2.1 | Alterar Cronograma Preliminar | 1.88d? | 2017-03-28 | 2017-03-30 |  | 0d | Natan | 15h |
| 30 | 1.3.2.2 | Revisar Cronograma Definitivo | 1d? | 2017-03-30 | 2017-03-31 | 29 | 0d | Tiago | 8h |
| 31 | 1.4 | **Desenvolvimento** | 34.38d? | 2017-03-31 | 2017-05-18 | 30 | 0d |  | 295h |
| 32 | 1.4.1 | **Código-Fonte** | 34.38d? | 2017-03-31 | 2017-05-18 |  | 0d |  | 295h |
| 33 | 1.4.1.1 | Implementar RFs | 15d? | 2017-03-31 | 2017-04-21 |  | 0d | Tiago [33.3%]; Natan [33.3%]; Homero [33.3%] | 120h |
| 34 | 1.4.1.2 | Implementar Regras de Negócio | 10d? | 2017-04-21 | 2017-05-05 | 33 | 0d | Tiago [50%]; Natan [50%] | 80h |
| 35 | 1.4.1.3 | Implementar parte gráfica | 6.88d? | 2017-05-05 | 2017-05-16 | 34 | 0d | Natan [33.3%]; Tiago [33.3%]; Homero [33.3%] | 55h |
| 36 | 1.4.1.4 | Revisar Código | 2.5d? | 2017-05-16 | 2017-05-18 | 35 | 5d | Tiago [50%]; Homero [50%] | 20h |
| 37 | 1.4.1.5 | Testes | 2.5d? | 2017-05-16 | 2017-05-18 | 35 | 0d | Natan [50%]; Tiago [50%] | 20h |
| 38 | 1.5 | **Fechamento** | 5d? | 2017-05-18 | 2017-05-25 | 37 | 0d |  | 36h |
| 39 | 1.5.1 | **Documentação** | 3d? | 2017-05-18 | 2017-05-23 |  | 0d |  | 24h |
| 40 | 1.5.1.1 | Revisar Funcionalidades | 1.25d? | 2017-05-18 | 2017-05-19 |  | 0d | Natan | 10h |
| 41 | 1.5.1.2 | Redigir Documentação do código | 1.75d? | 2017-05-22 | 2017-05-23 | 40 | 0d | Tiago [50%]; Homero [50%] | 14h |
| 42 | 1.5.2 | **Relatório lições aprendidas** | 2d? | 2017-05-23 | 2017-05-25 | 41 | 0d |  | 12h |
| 43 | 1.5.2.1 | Redigir relatório | 1d? | 2017-05-23 | 2017-05-24 |  | 0d | Natan | 8h |
| 44 | 1.5.2.2 | Revisar relatório | 1d? | 2017-05-24 | 2017-05-25 | 43 | 0d | Tiago [50%] | 4h |
